# P3_Planejamento v2015 v2 - Completo

Schedule from MS Project, 2014-12-16 to 2015-03-26, A marks actual dates.

## Calendars

- Padrão: Mon-Fri 09:00-12:00, 13:00-18:00; Sat-Sun off. Exceptions (off unless hours are given): 2014-12-26 to 2015-01-05 (RECESSO), 2015-01-27 to 2015-02-01 (PROVAS).

## Resources

| Resource |
| --- |
| Valdir - Analista |
| Gabriel - Analista |
| Haroldo - SQA |
| Thiago - SQA |
| Rogério - Gerente |
| Alex - Gerente |
| Renan - Codificador |
| Roberto - Codificador |

## Schedule

| ID | WBS | Task | Duration | Start | Finish | Predecessors | Complete | Constraint | Resources | Work | Actual work |
| --- | --- | --- | --- | --- | --- | --- | --- | --- | --- | --- | --- |
| 1 | 1 | **Projeto 3** | 62d | 2014-12-16 A | 2015-03-26 A |  | 100% |  |  | 1032h | 1032h |
| 2 | 1.1 | **Documento de Requisito** | 8d | 2014-12-16 A | 2014-12-26 A |  | 100% |  |  | 128h | 128h |
| 3 | 1.1.1 | Relatorio de Defeitos - v1 | 3d | 2014-12-16 A | 2014-12-18 A |  | 100% |  | Alex - Gerente; Rogério - Gerente | 48h | 48h |
| 4 | 1.1.2 | Criar Documento Requisito | 3d | 2014-12-19 A | 2014-12-23 A | 3 | 100% |  | Alex - Gerente; Rogério - Gerente | 48h | 48h |
| 5 | 1.1.3 | Verificação Documentos de requisito | 2d | 2014-12-24 A | 2014-12-25 A | 4 | 100% |  | Alex - Gerente; Rogério - Gerente | 32h | 32h |
| 6 | 1.1.4 | RTF - Controle - GERENTES | 1d | 2014-12-26 A | 2014-12-26 A | 5 | 100% |  |  |  |  |
| 7 | 1.2 | **CICLO I - 4 casos de uso** | 39d | 2015-01-06 A | 2015-03-05 A | 2 | 100% |  |  | 344h | 344h |
| 8 | 1.2.1 | **Caso de Uso Geral** | 15d | 2015-01-06 A | 2015-01-26 A |  | 100% |  |  | 120h | 120h |
| 9 | 1.2.1.1 | **Caso de Uso Alto Nivel** | 6d | 2015-01-06 A | 2015-01-13 A | 6 | 100% |  |  | 48h | 48h |
| 10 | 1.2.1.1.1 | Criar Documento Caso de Uso - Alto Nivel | 2d | 2015-01-06 A | 2015-01-07 A | 6 | 100% |  | Valdir - Analista | 16h | 16h |
| 11 | 1.2.1.1.2 | Verificar Documento de Casos de Uso de Alto Nível | 2d | 2015-01-08 A | 2015-01-09 A | 10 | 100% |  | Haroldo - SQA | 16h | 16h |
| 12 | 1.2.1.1.3 | Corrigir Documento de Casos de Uso de Alto Nível | 2d | 2015-01-12 A | 2015-01-13 A | 11 | 100% |  | Valdir - Analista | 16h | 16h |
| 13 | 1.2.1.2 | **Diagrama de Caso de Uso** | 3d | 2015-01-14 A | 2015-01-16 A | 12 | 100% |  |  | 24h | 24h |
| 14 | 1.2.1.2.1 | Criar Diagrama de Casos de Uso | 1d | 2015-01-14 A | 2015-01-14 A | 12 | 100% |  | Valdir - Analista | 8h | 8h |
| 15 | 1.2.1.2.2 | Verificar Diagrama de Casos de Uso | 1d | 2015-01-15 A | 2015-01-15 A | 14 | 100% | start no earlier than 2014-12-17 | Haroldo - SQA | 8h | 8h |
| 16 | 1.2.1.2.3 | Corrigir Diagrama de Casos de Uso | 1d | 2015-01-16 A | 2015-01-16 A | 15 | 100% |  | Valdir - Analista | 8h | 8h |
| 17 | 1.2.1.3 | **Caso de Uso - Expandido** | 6d | 2015-01-19 A | 2015-01-26 A |  | 100% |  |  | 48h | 48h |
| 18 | 1.2.1.3.1 | Criar Documento de Casos de Uso Expandido | 2d | 2015-01-19 A | 2015-01-20 A | 16 | 100% |  | Valdir - Analista | 16h | 16h |
| 19 | 1.2.1.3.2 | Verificar Documento de Casos de Uso Expandido | 2d | 2015-01-21 A | 2015-01-22 A | 18 | 100% |  | Haroldo - SQA | 16h | 16h |
| 20 | 1.2.1.3.3 | Corrigir Caso de Uso Expandido | 2d | 2015-01-23 A | 2015-01-26 A | 19 | 100% |  | Valdir - Analista | 16h | 16h |
| 21 | 1.2.2 | **Diagrama de Sequencia** | 4d | 2015-02-02 A | 2015-02-05 A | 8 | 100% |  |  | 32h | 32h |
| 22 | 1.2.2.1 | Criar Diagrama de Sequência de Sistema | 2d | 2015-02-02 A | 2015-02-03 A |  | 100% |  | Valdir - Analista | 16h | 16h |
| 23 | 1.2.2.2 | Verificar Diagrama de Sequência de Sistema | 1d | 2015-02-04 A | 2015-02-04 A | 22 | 100% |  | Haroldo - SQA | 8h | 8h |
| 24 | 1.2.2.3 | Corrigir Diagrama de Sequência de Sistema | 1d | 2015-02-05 A | 2015-02-05 A | 23 | 100% |  | Valdir - Analista | 8h | 8h |
| 25 | 1.2.3 | RTF | 1d | 2015-02-06 A | 2015-02-06 A | 24 | 100% |  | Haroldo - SQA; Roberto - Codificador; Rogério - Gerente; Valdir - Analista | 32h | 32h |

| ID | WBS | Task | Duration | Start | Finish | Predecessors | Complete | Constraint | Resources | Work | Actual work |
| --- | --- | --- | --- | --- | --- | --- | --- | --- | --- | --- | --- |
| 26 | 1.2.4 | **Modelo Conceitual** | 4d | 2015-02-06 A | 2015-02-11 A | 24, 25SS | 100% |  |  | 32h | 32h |
| 27 | 1.2.4.1 | Criar Modelo Conceitual | 2d | 2015-02-06 A | 2015-02-09 A |  | 100% |  | Valdir - Analista | 16h | 16h |
| 28 | 1.2.4.2 | Verificar Modelo Conceitual | 1d | 2015-02-10 A | 2015-02-10 A | 27 | 100% |  | Haroldo - SQA | 8h | 8h |
| 29 | 1.2.4.3 | Corrigir Modelo Conceitual | 1d | 2015-02-11 A | 2015-02-11 A | 28 | 100% |  | Valdir - Analista | 8h | 8h |
| 30 | 1.2.5 | **Diagrama de Colaboração** | 5d | 2015-02-12 A | 2015-02-18 A | 26 | 100% |  |  | 40h | 40h |
| 31 | 1.2.5.1 | Criar Diagrama de Colaboração (Parte 1.1) | 3d | 2015-02-12 A | 2015-02-16 A |  | 100% |  | Valdir - Analista | 24h | 24h |
| 32 | 1.2.5.2 | Verificar Diagrama de Colaboração (Parte 1.1) | 1d | 2015-02-17 A | 2015-02-17 A | 31 | 100% |  | Haroldo - SQA | 8h | 8h |
| 33 | 1.2.5.3 | Corrigir Diagrama de Colaboração (Parte 1.1) | 1d | 2015-02-18 A | 2015-02-18 A | 32 | 100% |  | Valdir - Analista | 8h | 8h |
| 34 | 1.2.6 | **Diagrama de Classe** | 5d | 2015-02-19 A | 2015-02-25 A | 30 | 100% |  |  | 40h | 40h |
| 35 | 1.2.6.1 | Criar Diagrama de Classes (Parte 1.1) | 3d | 2015-02-19 A | 2015-02-23 A |  | 100% |  | Valdir - Analista | 24h | 24h |
| 36 | 1.2.6.2 | Verificar Diagrama de Classes (Parte 1.1) | 1d | 2015-02-24 A | 2015-02-24 A | 35 | 100% |  | Haroldo - SQA | 8h | 8h |
| 37 | 1.2.6.3 | Corrigir Diagrama de Classes (Parte 1.1) | 1d | 2015-02-25 A | 2015-02-25 A | 36 | 100% |  | Valdir - Analista | 8h | 8h |
| 38 | 1.2.7 | RTF | 1d | 2015-01-22 A | 2015-01-22 A |  | 100% | start no earlier than 2015-01-05 |  |  |  |
| 39 | 1.2.8 | **Codificação - Parte 1** | 6d | 2015-02-26 A | 2015-03-05 A | 34 | 100% |  |  | 48h | 48h |
| 40 | 1.2.8.1 | Codificar (Parte 1) | 4d | 2015-02-26 A | 2015-03-03 A |  | 100% |  | Roberto - Codificador | 32h | 32h |
| 41 | 1.2.8.2 | Verificar Codificação (Parte 1) | 1d | 2015-03-04 A | 2015-03-04 A | 40 | 100% |  | Haroldo - SQA | 8h | 8h |
| 42 | 1.2.8.3 | Corrigir Codificação (Parte 1) | 1d | 2015-03-05 A | 2015-03-05 A | 41 | 100% |  | Roberto - Codificador | 8h | 8h |
| 43 | 1.3 | **CICLO II - 4 Casos de Uso** | 44d | 2015-01-06 A | 2015-03-12 A | 2, 38SS | 100% |  |  | 400h | 400h |
| 44 | 1.3.1 | **Caso de Uso Geral** | 15d | 2015-01-06 A | 2015-01-26 A | 8SS | 100% |  |  | 120h | 120h |
| 45 | 1.3.1.1 | **Caso de Uso Alto Nivel** | 6d | 2015-01-06 A | 2015-01-13 A |  | 100% |  |  | 48h | 48h |
| 46 | 1.3.1.1.1 | Criar Documento Caso de Uso - Alto Nivel | 2d | 2015-01-06 A | 2015-01-07 A |  | 100% |  | Gabriel - Analista | 16h | 16h |
| 47 | 1.3.1.1.2 | Verificar Documento de Casos de Uso de Alto Nível | 2d | 2015-01-08 A | 2015-01-09 A | 46 | 100% |  | Thiago - SQA | 16h | 16h |
| 48 | 1.3.1.1.3 | Corrigir Documento de Casos de Uso de Alto Nível | 2d | 2015-01-12 A | 2015-01-13 A | 47 | 100% |  | Gabriel - Analista | 16h | 16h |
| 49 | 1.3.1.2 | **Diagrama de Caso de Uso** | 3d | 2015-01-14 A | 2015-01-16 A | 45 | 100% |  |  | 24h | 24h |
| 50 | 1.3.1.2.1 | Criar Diagrama de Casos de Uso | 1d | 2015-01-14 A | 2015-01-14 A |  | 100% |  | Gabriel - Analista | 8h | 8h |
| 51 | 1.3.1.2.2 | Verificar Diagrama de Casos de Uso | 1d | 2015-01-15 A | 2015-01-15 A | 50 | 100% |  | Thiago - SQA | 8h | 8h |
| 52 | 1.3.1.2.3 | Corrigir Diagrama de Casos de Uso | 1d | 2015-01-16 A | 2015-01-16 A | 51 | 100% |  | Gabriel - Analista | 8h | 8h |

| ID | WBS | Task | Duration | Start | Finish | Predecessors | Complete | Constraint | Resources | Work | Actual work |
| --- | --- | --- | --- | --- | --- | --- | --- | --- | --- | --- | --- |
| 53 | 1.3.1.3 | **Caso de Uso - Expandido** | 6d | 2015-01-19 A | 2015-01-26 A | 49 | 100% |  |  | 48h | 48h |
| 54 | 1.3.1.3.1 | Criar Documento de Casos de Uso Expandido | 2d | 2015-01-19 A | 2015-01-20 A |  | 100% |  | Gabriel - Analista | 16h | 16h |
| 55 | 1.3.1.3.2 | Verificar Documento de Casos de Uso Expandido | 2d | 2015-01-21 A | 2015-01-22 A | 54 | 100% |  | Thiago - SQA | 16h | 16h |
| 56 | 1.3.1.3.3 | Corrigir Caso de Uso Expandido | 2d | 2015-01-23 A | 2015-01-26 A | 55 | 100% |  | Gabriel - Analista | 16h | 16h |
| 57 | 1.3.2 | **Diagrama de Sequencia** | 4d | 2015-02-02 A | 2015-02-05 A | 56 | 100% |  |  | 32h | 32h |
| 58 | 1.3.2.1 | Criar Diagrama de Sequência de Sistema | 2d | 2015-02-02 A | 2015-02-03 A |  | 100% |  | Gabriel - Analista | 16h | 16h |
| 59 | 1.3.2.2 | Verificar Diagrama de Sequência de Sistema | 1d | 2015-02-04 A | 2015-02-04 A | 58 | 100% |  | Thiago - SQA | 8h | 8h |
| 60 | 1.3.2.3 | Corrigir Diagrama de Sequência de Sistema | 1d | 2015-02-05 A | 2015-02-05 A | 59 | 100% |  | Gabriel - Analista | 8h | 8h |
| 61 | 1.3.3 | RTF | 1d | 2015-02-05 A | 2015-02-05 A | 60 | 100% |  | Alex - Gerente; Gabriel - Analista; Renan - Codificador; Thiago - SQA | 32h | 32h |
| 62 | 1.3.4 | **Modelo Conceitual** | 4d | 2015-02-06 A | 2015-02-11 A | 61SS | 100% |  |  | 32h | 32h |
| 63 | 1.3.4.1 | Criar Modelo Conceitual | 2d | 2015-02-06 A | 2015-02-09 A |  | 100% |  | Gabriel - Analista | 16h | 16h |
| 64 | 1.3.4.2 | Verificar Modelo Conceitual | 1d | 2015-02-10 A | 2015-02-10 A | 63 | 100% |  | Thiago - SQA | 8h | 8h |
| 65 | 1.3.4.3 | Corrigir Modelo Conceitual | 1d | 2015-02-11 A | 2015-02-11 A | 64 | 100% |  | Gabriel - Analista | 8h | 8h |
| 66 | 1.3.5 | **Diagrama de Colaboração** | 5d | 2015-02-12 A | 2015-02-18 A | 62 | 100% |  |  | 40h | 40h |
| 67 | 1.3.5.1 | Criar Diagrama de Colaboração (Parte 1.1) | 3d | 2015-02-12 A | 2015-02-16 A |  | 100% |  | Gabriel - Analista | 24h | 24h |
| 68 | 1.3.5.2 | Verificar Diagrama de Colaboração (Parte 1.1) | 1d | 2015-02-17 A | 2015-02-17 A | 67 | 100% |  | Thiago - SQA | 8h | 8h |
| 69 | 1.3.5.3 | Corrigir Diagrama de Colaboração (Parte 1.1) | 1d | 2015-02-18 A | 2015-02-18 A | 68 | 100% |  | Gabriel - Analista | 8h | 8h |
| 70 | 1.3.6 | **Diagrama de Classe** | 6d | 2015-02-19 A | 2015-02-26 A | 66 | 100% |  |  | 64h | 64h |
| 71 | 1.3.6.1 | Criar Diagrama de Classes (Parte 1.1) | 3d | 2015-02-19 A | 2015-02-23 A |  | 100% |  | Gabriel - Analista | 24h | 24h |
| 72 | 1.3.6.2 | Verificar Diagrama de Classes (Parte 1.1) | 3d | 2015-02-24 A | 2015-02-26 A | 71 | 100% |  | Thiago - SQA | 24h | 24h |
| 73 | 1.3.6.3 | Corrigir Diagrama de Classes (Parte 1.1) | 2d | 2015-02-25 A | 2015-02-26 A | 72 | 100% |  | Gabriel - Analista | 16h | 16h |
| 74 | 1.3.7 | **Codificação - Parte 2** | 10d | 2015-02-27 A | 2015-03-12 A | 70 | 100% |  |  | 80h | 80h |
| 75 | 1.3.7.1 | Codificar (Parte 1) | 6d | 2015-02-27 A | 2015-03-06 A |  | 100% |  | Renan - Codificador | 48h | 48h |
| 76 | 1.3.7.2 | Verificar Codificação (Parte 1) | 2d | 2015-03-09 A | 2015-03-10 A | 75 | 100% |  | Thiago - SQA | 16h | 16h |
| 77 | 1.3.7.3 | Corrigir Codificação (Parte 1) | 2d | 2015-03-11 A | 2015-03-12 A | 76 | 100% |  | Renan - Codificador | 16h | 16h |
| 78 | 1.4 | RTF - FINAL DA DUPLA | 1d | 2015-03-13 A | 2015-03-13 A | 43 | 100% |  | Alex - Gerente; Gabriel - Analista; Haroldo - SQA; Renan - Codificador; Roberto - Codificador; Rogério - Gerente; Thiago - SQA; Valdir - Analista | 64h | 64h |
| 79 | 1.5 | Teste de Software | 4d | 2015-03-16 A | 2015-03-19 A | 78 | 100% |  | Roberto - Codificador; Renan - Codificador | 64h | 64h |
| 80 | 1.6 | Corrigir Codificação | 4d | 2015-03-20 A | 2015-03-25 A | 79 | 100% | start no earlier than 2015-02-09 | Haroldo - SQA | 32h | 32h |
| 81 | 1.7 | Apresentação - Projeto | 1d | 2015-03-26 A | 2015-03-26 A | 80 | 100% |  |  |  |  |
